# 福莱特自研MES项目

Schedule from a web Gantt chart, 2026-09-21 to 2027-01-22.
Saturdays and Sundays are off

## Schedule

| ID | WBS | Task | Duration | Start | Finish | Predecessors | Status |
| --- | --- | --- | --- | --- | --- | --- | --- |
| 2 | 1 | 项目启动会 | 1d | 2026-11-20 | 2026-11-20 |  | waiting |
| 3 | 2 | **培训** | 10d | 2026-11-16 | 2026-11-27 |  | waiting |
| 4 | 2.1 | 培训材料编写 | 5d | 2026-11-16 | 2026-11-20 |  | waiting |
| 5 | 2.2 | 系统培训 | 5d | 2026-11-23 | 2026-11-27 |  | waiting |
| 6 | 3 | **系统试运行** | 20d | 2026-11-16 | 2026-12-11 |  | waiting |
| 7 | 3.1 | 现场设备硬件确认 | 5d | 2026-11-23 | 2026-11-27 |  | waiting |
| 8 | 3.2 | 试运行环境搭建 | 5d | 2026-11-16 | 2026-11-20 |  | waiting |
| 9 | 3.3 | 试运行数据准备 | 10d | 2026-11-16 | 2026-11-27 |  | waiting |
| 10 | 3.4 | 系统试运行 | 10d | 2026-11-30 | 2026-12-11 |  | waiting |
| 11 | 3.5 | 功能优化 | 10d | 2026-11-30 | 2026-12-11 |  | waiting |
| 12 | 4 | **系统上线** | 40d | 2026-11-30 | 2027-01-22 |  | waiting |
| 13 | 4.1 | 正式环境部署 | 5d | 2026-11-30 | 2026-12-04 |  | waiting |
| 14 | 4.2 | 正式环境数据准备 | 5d | 2026-12-07 | 2026-12-11 | 13 | waiting |
| 15 | 4.3 | 正式上线 | 15d | 2026-12-14 | 2027-01-01 |  | waiting |
| 16 | 4.4 | 验收签字 | 15d | 2027-01-04 | 2027-01-22 | 15 | waiting |
| 17 | 5 | **南通** | 85d | 2026-09-21 | 2027-01-15 |  | waiting |
| 18 | 5.1 | 南通设备准备 | 35d | 2026-09-21 | 2026-11-06 |  | waiting |
| 19 | 5.2 | **系统试运行** | 30d | 2026-11-09 | 2026-12-18 |  | waiting |
| 20 | 5.2.1 | 现场设备硬件确认 | 5d | 2026-11-09 | 2026-11-13 |  | waiting |
| 21 | 5.2.2 | 试运行环境搭建 | 5d | 2026-11-09 | 2026-11-13 |  | waiting |
| 22 | 5.2.3 | 试运行数据准备 | 10d | 2026-11-09 | 2026-11-20 |  | waiting |
| 23 | 5.2.4 | 系统动员会 | 1d | 2026-11-20 | 2026-11-20 |  | waiting |
| 24 | 5.2.5 | 系统培训 | 5d | 2026-11-23 | 2026-11-27 | 22 | waiting |
| 25 | 5.2.6 | 系统试运行 | 15d | 2026-11-30 | 2026-12-18 | 24 | waiting |
| 26 | 5.2.7 | 系统针对性优化 | 15d | 2026-11-30 | 2026-12-18 |  | waiting |

| ID | WBS | Task | Duration | Start | Finish | Predecessors | Status |
| --- | --- | --- | --- | --- | --- | --- | --- |
| 27 | 5.3 | **正式上线** | 30d | 2026-12-07 | 2027-01-15 |  | waiting |
| 28 | 5.3.1 | 正式环境部署 | 5d | 2026-12-07 | 2026-12-11 |  | waiting |
| 29 | 5.3.2 | 正式环境数据准备 | 5d | 2026-12-14 | 2026-12-18 | 28 | waiting |
| 30 | 5.3.3 | 系统正式上线 | 20d | 2026-12-21 | 2027-01-15 | 25, 29 | waiting |
